Schedule from MS Project, 2017-02-20 to 2018-04-20.

## Calendars

- Estándar: Mon-Fri 09:00-13:00, 15:00-19:00; Sat-Sun off. Exceptions (off unless hours are given): 2017-02-28 (Día de Andalucía), 2017-04-13 (Jueves Santo), 2017-04-14 (Viernes Santo), 2017-05-01 (Fiesta del trabajo), 2017-08-15 (Asunción de la Virgen), 2017-09-08 (Virgen de la Victoria), 2017-10-12 (Fiesta nacional de España), 2017-11-01 (Día de todos Los Santos), 2017-12-06 (Día de la Constitución Española), 2017-12-08 (La Inmaculada Concepción), 2017-12-25 (Natividad del Señor), 2018-01-01 (Año nuevo), 2018-02-28 (Día de Andalucía), 2018-03-29 (Jueves Santo), 2018-03-30 (Viernes Santo).

## Schedule

| ID | WBS | Task | Type | Duration | Start | Finish | Predecessors | Total slack |
| --- | --- | --- | --- | --- | --- | --- | --- | --- |
| 1 | 1 | **TOTAL PROYECTO** |  | 290d | 2017-02-20 | 2018-04-20 |  |  |
| 2 | 1.1 | **FASE 1: PREPARACIÓN PARA LA FORMULACIÓN** |  | 33d | 2017-02-20 | 2017-04-06 |  | 0d |
| 3 | 1.1.1 | INICIO | manual | 1d | 2017-02-20 | 2017-02-20 |  |  |
| 4 | 1.1.2 | TERMINOS DE REFERENCIA. Objetivos. Condicionantes del Promotor | manual | 10d | 2017-02-21 | 2017-03-07 | 3 |  |
| 5 | 1.1.3 | FINANCIACION | manual | 7d | 2017-02-21 | 2017-03-02 | 3 |  |
| 6 | 1.1.4 | COMITÉ DE COORDINACION. Constitución y organización | manual | 5d | 2017-02-21 | 2017-02-27 | 3 |  |
| 7 | 1.1.5 | EQUIPO DE FORMULACION. Recursos humanos y técnicos | manual | 15d | 2017-03-01 | 2017-03-21 | 4SS, 6 |  |
| 8 | 1.1.6 | METODOLOGIA Y PLAN DE TRABAJO | manual | 10d | 2017-03-15 | 2017-03-28 | 7FS-5d, 5, 4, 6SS |  |
| 9 | 1.1.7 | DOC. Nº1: Fin P.F | manual | 5d | 2017-03-29 | 2017-04-04 | 8 |  |
| 10 | 1.1.8 | Entrega al PROMOTOR. Doc. nº1 | manual | 1d | 2017-04-05 | 2017-04-05 | 9 |  |
| 11 | 1.1.9 | SEMINARIO DE LANZAMIENTO DEL PROYECTO | manual | 1d | 2017-04-06 | 2017-04-06 | 10 |  |
| 12 | 1.2 | **FASE 2: ANALISIS Y DIAGNOSTICO** |  | 134d? | 2017-02-20 | 2017-08-31 |  | 0d |
| 13 | 1.2.1 | **ANALISIS ANTECEDENTES** |  | 15d | 2017-02-20 | 2017-03-13 | 11 |  |
| 14 | 1.2.1.1 | POLITICAS Y PROGRAMAS | manual | 10d | 2017-04-07 | 2017-04-24 | 11 |  |
| 15 | 1.2.1.2 | MARCO LEGAL | manual | 15d | 2017-04-07 | 2017-05-02 | 11 |  |
| 16 | 1.2.1.3 | BASES DE DATOS EXISTENTES | manual | 7d | 2017-04-07 | 2017-04-19 | 11 |  |
| 17 | 1.2.2 | **ANALISIS DEL AREA DEL PROYECTO** |  | 80d | 2017-04-19 | 2017-08-10 | 11, 16 | 0d |
| 18 | 1.2.2.1 | ANALISIS DE RECURSOS NATURALES. INVENTARIO AMBIENTAL | manual | 35d | 2017-04-19 | 2017-06-08 |  |  |
| 19 | 1.2.2.2 | INFRAESTRUCTURAS Y SERVICIOS | manual | 20d | 2017-06-09 | 2017-07-06 | 18 |  |
| 20 | 1.2.2.3 | ANALISIS DE SECTORES PRODUCTIVOS | manual | 25d | 2017-07-07 | 2017-08-10 | 14, 13, 15, 19 |  |
| 21 | 1.2.2.4 | ANALISIS POBLACIONAL | manual | 20d | 2017-04-19 | 2017-05-18 |  |  |
| 22 | 1.2.2.5 | SISTEMA GENERAL TERRITORIAL DE INFORMACION | manual | 21d | 2017-04-20 | 2017-05-19 | 16 |  |
| 23 | 1.2.3 | **ANALISIS DE AGENTES Y PARTICIPACION** |  | 82d | 2017-05-05 | 2017-08-29 |  | 0d |
| 24 | 1.2.3.1 | IDENTIFICACIÓN DE AGENTES Y TIPOLOGIA | manual | 10d | 2017-05-05 | 2017-05-18 | 22SS+10d |  |
| 25 | 1.2.3.2 | ANALISIS DE LA PARTICIPACIÓN: ENCUESTA CON LOS AGENTES | manual | 60d | 2017-05-19 | 2017-08-10 | 24 |  |
| 26 | 1.2.3.3 | TALLER DE PARTICIPACIÓN AGENTES PUBLICOS | manual | 1d | 2017-06-02 | 2017-06-02 | 25SS+10d |  |
| 27 | 1.2.3.4 | ANALISIS PROSPECTIVO SIN | manual | 6d | 2017-06-05 | 2017-06-12 | 26 |  |
| 28 | 1.2.3.5 | INFORME DE PARTICIPACION: Problemas, necesidades, oportunidades | manual | 10d | 2017-08-11 | 2017-08-25 | 27, 25 |  |
| 29 | 1.2.3.6 | PRESENTACIÓN Y VALIDACION DE CONCLUSIONES | manual | 2d | 2017-08-28 | 2017-08-29 | 28 |  |
| 30 | 1.2.4 | CONCLUSIONES Y Doc. Nº2. Presentación al PROMOTOR | manual | 1d | 2017-08-30 | 2017-08-30 | 29 |  |
| 31 | 1.2.5 | Doc. nº2. REVISIÓN POR EL PROMOTOR | manual | 1d? | 2017-08-31 | 2017-08-31 | 29, 30 |  |
